# 141001_EAP_150323_1700

Schedule from MS Project, 2022-03-21 to 2022-07-21, status date 2018-03-13.

## Calendars

- Padrão: Mon-Fri 09:00-12:00, 13:00-18:00; Sat-Sun off.

## Schedule

| ID | WBS | Task | Type | Duration | Start | Finish | Predecessors | Baseline start | Baseline finish | Baseline duration | Total slack | Free slack |
| --- | --- | --- | --- | --- | --- | --- | --- | --- | --- | --- | --- | --- |
| 1 | 1 | **AF05** |  | 89d | 2022-03-21 | 2022-07-21 |  | 2022-03-21 | 2022-07-21 | 89d | 0d |  |
| 2 | 1.1 | **Administrativo** |  | 5d | 2022-03-21 | 2022-03-25 |  | 2022-03-21 | 2022-03-25 | 5d | 0d |  |
| 3 | 1.1.1 | **Reuniões** |  | 0d | 2022-03-21 | 2022-03-21 |  | 2022-03-21 | 2022-03-21 | 0d | 0d |  |
| 4 | 1.1.1.1 | Alinhamento do escopo | milestone | 0h | 2022-03-21 | 2022-03-21 |  | 2022-03-21 | 2022-03-21 | 0h | 89d |  |
| 5 | 1.1.1.2 | Kick-off | milestone | 0h | 2022-03-21 | 2022-03-21 |  | 2022-03-21 | 2022-03-21 | 0h | 0d |  |
| 6 | 1.1.1.3 | Reunião Semanal 1 | milestone | 0h | 2022-03-21 | 2022-03-21 |  | 2022-03-21 | 2022-03-21 | 0h | 89d |  |
| 7 | 1.1.1.4 | Reunião Semanal 2 | milestone | 0h | 2022-03-21 | 2022-03-21 |  | 2022-03-21 | 2022-03-21 | 0h | 89d |  |
| 8 | 1.1.1.5 | Reunião Semanal 3 | milestone | 0h | 2022-03-21 | 2022-03-21 |  | 2022-03-21 | 2022-03-21 | 0h | 89d |  |
| 9 | 1.1.1.6 | Reunião Semanal 4 | milestone | 0h | 2022-03-21 | 2022-03-21 |  | 2022-03-21 | 2022-03-21 | 0h | 89d |  |
| 10 | 1.1.1.7 | Reunião Semanal 5 | milestone | 0h | 2022-03-21 | 2022-03-21 |  | 2022-03-21 | 2022-03-21 | 0h | 89d |  |
| 11 | 1.1.1.8 | Reunião Semanal 6 | milestone | 0h | 2022-03-21 | 2022-03-21 |  | 2022-03-21 | 2022-03-21 | 0h | 89d |  |
| 12 | 1.1.2 | **Documentação** |  | 5d | 2022-03-21 | 2022-03-25 |  | 2022-03-21 | 2022-03-25 | 5d | 40d |  |
| 13 | 1.1.2.1 | Enviar documentação segurança trabalho |  | 3d | 2022-03-21 | 2022-03-23 | 5 | 2022-03-21 | 2022-03-23 | 3d | 40d | 0d |
| 14 | 1.1.2.2 | Criar/Enviar Cronograma Inicial |  | 1d | 2022-03-21 | 2022-03-21 |  | 2022-03-21 | 2022-03-21 | 1d | 42d | 2d |
| 15 | 1.1.2.3 | Aprovar Documentações |  | 2d | 2022-03-24 | 2022-03-25 | 13, 14 | 2022-03-24 | 2022-03-25 | 2d | 40d |  |
| 16 | 1.1.2.4 | Registrar/Enviar ART | milestone | 0h | 2022-03-21 | 2022-03-21 | 5 | 2022-03-21 | 2022-03-21 | 0h | 89d |  |
| 17 | 1.2 | **Projetos** |  | 45d | 2022-03-21 | 2022-05-20 |  | 2022-03-21 | 2022-05-20 | 45d | 0d |  |
| 18 | 1.2.1 | **Estudo do Sistema** |  | 1d | 2022-03-21 | 2022-03-21 |  | 2022-03-21 | 2022-03-21 | 1d | 0d |  |
| 19 | 1.2.1.1 | Receber documentos | milestone | 0d | 2022-03-21 | 2022-03-21 | 5 | 2022-03-21 | 2022-03-21 | 0d | 0d |  |
| 20 | 1.2.1.2 | Definir CLP | milestone | 0d | 2022-03-21 | 2022-03-21 | 19 | 2022-03-21 | 2022-03-21 | 0d | 52d | 12d |
| 21 | 1.2.1.3 | Definir Sistema Supervisorio | milestone | 0d | 2022-03-21 | 2022-03-21 | 19 | 2022-03-21 | 2022-03-21 | 0d | 89d |  |
| 22 | 1.2.1.4 | Levantar de requisitos |  | 1d | 2022-03-21 | 2022-03-21 | 19 | 2022-03-21 | 2022-03-21 | 1d | 0d |  |
| 23 | 1.2.2 | **Projeto do Painel CLP** |  | 26d | 2022-03-22 | 2022-04-26 |  | 2022-03-22 | 2022-04-26 | 26d | 32d |  |
| 24 | 1.2.2.1 | Elaborar diagrama eletrico |  | 10d | 2022-03-22 | 2022-04-04 | 22 | 2022-03-22 | 2022-04-04 | 10d | 32d | 0d |
| 25 | 1.2.2.2 | Gerar LM |  | 2d | 2022-04-05 | 2022-04-06 | 24 | 2022-04-05 | 2022-04-06 | 2d | 32d | 0d |
| 26 | 1.2.2.3 | Aprovar diagrama eletrico |  | 1d | 2022-04-07 | 2022-04-07 | 25 | 2022-04-07 | 2022-04-07 | 1d | 32d | 0d |
| 27 | 1.2.2.4 | Comprar material |  | 3d | 2022-04-08 | 2022-04-12 | 26 | 2022-04-08 | 2022-04-12 | 3d | 32d | 0d |
| 28 | 1.2.2.5 | Receber material |  | 10d | 2022-04-13 | 2022-04-26 | 27 | 2022-04-13 | 2022-04-26 | 10d | 32d |  |

| ID | WBS | Task | Duration | Start | Finish | Predecessors | Baseline start | Baseline finish | Baseline duration | Total slack | Free slack |
| --- | --- | --- | --- | --- | --- | --- | --- | --- | --- | --- | --- |
| 29 | 1.2.3 | **Projeto do Painel CCM** | 26d | 2022-03-22 | 2022-04-26 |  | 2022-03-22 | 2022-04-26 | 26d | 32d |  |
| 30 | 1.2.3.1 | Elaborar diagrama eletrico | 10d | 2022-03-22 | 2022-04-04 | 22 | 2022-03-22 | 2022-04-04 | 10d | 32d | 0d |
| 31 | 1.2.3.2 | Gerar LM | 2d | 2022-04-05 | 2022-04-06 | 30 | 2022-04-05 | 2022-04-06 | 2d | 32d | 0d |
| 32 | 1.2.3.3 | Aprovar diagrama eletrico | 1d | 2022-04-07 | 2022-04-07 | 31 | 2022-04-07 | 2022-04-07 | 1d | 32d | 0d |
| 33 | 1.2.3.4 | Compar material | 3d | 2022-04-08 | 2022-04-12 | 32 | 2022-04-08 | 2022-04-12 | 3d | 32d | 0d |
| 34 | 1.2.3.5 | Receber material | 10d | 2022-04-13 | 2022-04-26 | 33 | 2022-04-13 | 2022-04-26 | 10d | 32d |  |
| 35 | 1.2.4 | **Projeto do Aquisições** | 21d | 2022-03-22 | 2022-04-19 |  | 2022-03-22 | 2022-04-19 | 21d | 47d |  |
| 36 | 1.2.4.1 | Elaborar diagrama eletrico | 5d | 2022-03-22 | 2022-03-28 | 22 | 2022-03-22 | 2022-03-28 | 5d | 47d | 0d |
| 37 | 1.2.4.2 | Gerar LM | 2d | 2022-03-29 | 2022-03-30 | 36 | 2022-03-29 | 2022-03-30 | 2d | 47d | 0d |
| 38 | 1.2.4.3 | Aprovar diagrama eletrico | 2d | 2022-03-31 | 2022-04-01 | 37 | 2022-03-31 | 2022-04-01 | 2d | 47d | 0d |
| 39 | 1.2.4.4 | Compar material | 2d | 2022-04-04 | 2022-04-05 | 38 | 2022-04-04 | 2022-04-05 | 2d | 47d | 0d |
| 40 | 1.2.4.5 | Receber material | 10d | 2022-04-06 | 2022-04-19 | 39 | 2022-04-06 | 2022-04-19 | 10d | 47d |  |
| 41 | 1.2.5 | **Projeto do painel das balanças** | 21d | 2022-03-22 | 2022-04-19 |  | 2022-03-22 | 2022-04-19 | 21d | 27d |  |
| 42 | 1.2.5.1 | Elaborar diagrama eletrico | 5d | 2022-03-22 | 2022-03-28 | 22 | 2022-03-22 | 2022-03-28 | 5d | 27d | 0d |
| 43 | 1.2.5.2 | Gerar LM | 2d | 2022-03-29 | 2022-03-30 | 42 | 2022-03-29 | 2022-03-30 | 2d | 27d | 0d |
| 44 | 1.2.5.3 | Aprovar diagrama eletrico | 1d | 2022-03-31 | 2022-03-31 | 43 | 2022-03-31 | 2022-03-31 | 1d | 27d | 0d |
| 45 | 1.2.5.4 | Compar material | 3d | 2022-04-01 | 2022-04-05 | 44 | 2022-04-01 | 2022-04-05 | 3d | 27d | 0d |
| 46 | 1.2.5.5 | Receber material | 10d | 2022-04-06 | 2022-04-19 | 45 | 2022-04-06 | 2022-04-19 | 10d | 27d |  |
| 47 | 1.2.6 | **Projeto da Rede** | 14d | 2022-03-22 | 2022-04-08 |  | 2022-03-22 | 2022-04-08 | 14d | 32d |  |
| 48 | 1.2.6.1 | Estruturar Rede Comunicação Modbus/Ethernet | 2d | 2022-03-22 | 2022-03-23 | 22 | 2022-03-22 | 2022-03-23 | 2d | 32d | 0d |
| 49 | 1.2.6.2 | Estruturar Rede Comunicação CLP/Supervisorio | 1d | 2022-03-24 | 2022-03-24 | 48 | 2022-03-24 | 2022-03-24 | 1d | 32d | 0d |
| 50 | 1.2.6.3 | Gerar LM | 2d | 2022-03-25 | 2022-03-28 | 49 | 2022-03-25 | 2022-03-28 | 2d | 32d | 0d |
| 51 | 1.2.6.4 | Aprovar Documentação | 1d | 2022-03-29 | 2022-03-29 | 50 | 2022-03-29 | 2022-03-29 | 1d | 32d | 0d |
| 52 | 1.2.6.5 | Compar material | 3d | 2022-03-30 | 2022-04-01 | 51 | 2022-03-30 | 2022-04-01 | 3d | 32d | 0d |
| 53 | 1.2.6.6 | Receber material | 5d | 2022-04-04 | 2022-04-08 | 52 | 2022-04-04 | 2022-04-08 | 5d | 32d | 30d |

| ID | WBS | Task | Duration | Start | Finish | Predecessors | Baseline start | Baseline finish | Baseline duration | Total slack | Free slack |
| --- | --- | --- | --- | --- | --- | --- | --- | --- | --- | --- | --- |
| 54 | 1.2.7 | **Projetos Elétrica** | 44d | 2022-03-22 | 2022-05-20 |  | 2022-03-22 | 2022-05-20 | 44d | 0d |  |
| 55 | 1.2.7.1 | Arquitetura da rede de automação | 3d | 2022-03-22 | 2022-03-24 | 22 | 2022-03-22 | 2022-03-24 | 3d | 43d | 41d |
| 56 | 1.2.7.2 | Fluxograma do processo | 3d | 2022-03-22 | 2022-03-24 | 22 | 2022-03-22 | 2022-03-24 | 3d | 43d | 41d |
| 57 | 1.2.7.3 | Lista de Equipamentos | 5d | 2022-03-22 | 2022-03-28 | 22 | 2022-03-22 | 2022-03-28 | 5d | 0d |  |
| 58 | 1.2.7.4 | Relação de IO | 5d | 2022-03-29 | 2022-04-04 | 57 | 2022-03-29 | 2022-04-04 | 5d | 0d |  |
| 59 | 1.2.7.5 | Diagrama de interligação | 5d | 2022-04-05 | 2022-04-11 | 58 | 2022-04-05 | 2022-04-11 | 5d | 0d |  |
| 60 | 1.2.7.6 | LM Cabos | 5d | 2022-04-12 | 2022-04-18 | 59 | 2022-04-12 | 2022-04-18 | 5d | 26d |  |
| 61 | 1.2.7.7 | Eletromecanico | 5d | 2022-04-12 | 2022-04-18 | 59 | 2022-04-12 | 2022-04-18 | 5d | 0d |  |
| 62 | 1.2.7.8 | Rota de cabos | 5d | 2022-04-19 | 2022-04-25 | 59, 61 | 2022-04-19 | 2022-04-25 | 5d | 0d |  |
| 63 | 1.2.7.9 | LM Eletromecanica | 3d | 2022-04-21 | 2022-04-25 | 61, 62FF | 2022-04-21 | 2022-04-25 | 3d | 21d |  |
| 64 | 1.2.7.10 | Comprar peças para montagem | 2d | 2022-04-26 | 2022-04-27 | 62 | 2022-04-26 | 2022-04-27 | 2d | 0d |  |
| 65 | 1.2.7.11 | Receber material | 17d | 2022-04-28 | 2022-05-20 | 64 | 2022-04-28 | 2022-05-20 | 17d | 0d |  |
| 66 | 1.2.8 | **Mapa de Comunicação** | 11d | 2022-03-22 | 2022-04-05 |  | 2022-03-22 | 2022-04-05 | 11d | 40d |  |
| 67 | 1.2.8.1 | Elaborar Mapa Comunicação IO | 5d | 2022-03-22 | 2022-03-28 | 22 | 2022-03-22 | 2022-03-28 | 5d | 40d | 0d |
| 68 | 1.2.8.2 | Elaborar Mapa Comunicação CLP | 5d | 2022-03-29 | 2022-04-04 | 67 | 2022-03-29 | 2022-04-04 | 5d | 40d | 0d |
| 69 | 1.2.8.3 | Aprovar Documentação | 1d | 2022-04-05 | 2022-04-05 | 68 | 2022-04-05 | 2022-04-05 | 1d | 40d | 0d |
| 70 | 1.3 | **Programação CLP** | 25d | 2022-04-06 | 2022-05-10 |  | 2022-04-06 | 2022-05-10 | 25d | 40d |  |
| 71 | 1.3.1 | Programar CLP | 20d | 2022-04-06 | 2022-05-03 | 69 | 2022-04-06 | 2022-05-03 | 20d | 45d | 5d |
| 72 | 1.3.2 | Programar Supervisorio | 25d | 2022-04-06 | 2022-05-10 | 69, 20 | 2022-04-06 | 2022-05-10 | 25d | 40d | 0d |
| 73 | 1.4 | **Testes de plataformas** | 4d | 2022-05-11 | 2022-05-16 |  | 2022-05-11 | 2022-05-16 | 4d | 40d |  |
| 74 | 1.4.1 | Teste 1 | 1d | 2022-05-11 | 2022-05-11 | 71, 72 | 2022-05-11 | 2022-05-11 | 1d | 40d | 0d |
| 75 | 1.4.2 | Ajustes | 2d | 2022-05-12 | 2022-05-13 | 74 | 2022-05-12 | 2022-05-13 | 2d | 40d | 0d |
| 76 | 1.4.3 | Teste 2 | 1d | 2022-05-16 | 2022-05-16 | 75 | 2022-05-16 | 2022-05-16 | 1d | 40d | 0d |
| 77 | 1.5 | **Treinamentos** | 2d | 2022-05-17 | 2022-05-18 |  | 2022-05-17 | 2022-05-18 | 2d | 40d |  |
| 78 | 1.5.1 | Treinar Operadores | 1d | 2022-05-17 | 2022-05-17 | 76 | 2022-05-17 | 2022-05-17 | 1d | 40d | 0d |
| 79 | 1.5.2 | Treinar Manutençao | 1d | 2022-05-18 | 2022-05-18 | 78 | 2022-05-18 | 2022-05-18 | 1d | 40d |  |

| ID | WBS | Task | Type | Duration | Start | Finish | Predecessors | Baseline start | Baseline finish | Baseline duration | Total slack | Constraint |
| --- | --- | --- | --- | --- | --- | --- | --- | --- | --- | --- | --- | --- |
| 80 | 1.6 | **Montagens** |  | 38d | 2022-05-20 | 2022-07-13 |  | 2022-05-20 | 2022-07-13 | 38d | 0d |  |
| 81 | 1.6.1 | Aquisição materiais eletricos/cabos | milestone | 0d | 2022-05-20 | 2022-05-20 | 54, 53, 56, 55 | 2022-05-20 | 2022-05-20 | 0d | 2d |  |
| 82 | 1.6.2 | **Montagem dos paineis** |  | 25d | 2022-05-27 | 2022-06-30 |  | 2022-05-27 | 2022-06-30 | 25d | 0d |  |
| 83 | 1.6.2.1 | CCM01 |  | 15d | 2022-06-10 | 2022-06-30 | 34 | 2022-06-10 | 2022-06-30 | 15d | 0d | as late as possible |
| 84 | 1.6.2.2 | PLC |  | 15d | 2022-06-10 | 2022-06-30 | 28 | 2022-06-10 | 2022-06-30 | 15d | 0d | as late as possible |
| 85 | 1.6.2.3 | Painel Aquisições |  | 5d | 2022-06-24 | 2022-06-30 | 40 | 2022-06-24 | 2022-06-30 | 5d | 0d | as late as possible |
| 86 | 1.6.2.4 | Paineis diversos |  | 25d | 2022-05-27 | 2022-06-30 | 46 | 2022-05-27 | 2022-06-30 | 25d | 0d | as late as possible |
| 87 | 1.6.3 | **Montagens Metalsider** |  | 30d | 2022-05-25 | 2022-07-05 |  | 2022-05-25 | 2022-07-05 | 30d | 0d |  |
| 88 | 1.6.3.1 | Montar Sala Elétrica | milestone | 0d | 2022-05-25 | 2022-05-25 |  | 2022-05-25 | 2022-05-25 | 0d | 0d | as late as possible |
| 89 | 1.6.3.2 | Montar mecanica |  | 22d | 2022-06-06 | 2022-07-05 | 65 | 2022-06-06 | 2022-07-05 | 22d | 0d | as late as possible |
| 90 | 1.6.4 | **Montagem Eletromecânica/Campo** |  | 38d | 2022-05-23 | 2022-07-13 |  | 2022-05-23 | 2022-07-13 | 38d | 0d |  |
| 91 | 1.6.4.1 | Mobilização |  | 0.5d | 2022-05-23 | 2022-05-23 | 15, 65 | 2022-05-23 | 2022-05-23 | 0.5d | 0d |  |
| 92 | 1.6.4.2 | Organizar do canteiro de obras |  | 0.5d | 2022-05-23 | 2022-05-23 | 91 | 2022-05-23 | 2022-05-23 | 0.5d | 0d |  |
| 93 | 1.6.4.3 | Transportar paineis |  | 1d | 2022-07-01 | 2022-07-01 | 83, 84, 85, 86 | 2022-07-01 | 2022-07-01 | 1d | 0d | as late as possible |
| 94 | 1.6.4.4 | Colocar paineis nos locais |  | 2d | 2022-07-04 | 2022-07-05 | 93 | 2022-07-04 | 2022-07-05 | 2d | 0d |  |
| 95 | 1.6.4.5 | Montagem de andaimes |  | 1d | 2022-05-24 | 2022-05-24 | 92 | 2022-05-24 | 2022-05-24 | 1d | 0d |  |
| 96 | 1.6.4.6 | **Montagens** |  | 36d | 2022-05-25 | 2022-07-13 | 88 | 2022-05-25 | 2022-07-13 | 36d | 0d |  |
| 97 | 1.6.4.6.1 | Montagens/lançamento/interligações |  | 30d | 2022-05-25 | 2022-07-05 | 81, 82FF, 65, 95, 94FF | 2022-05-25 | 2022-07-05 | 30d | 0d |  |
| 98 | 1.6.4.6.2 | Montagens/lançamento/interligações |  | 6d | 2022-07-06 | 2022-07-13 | 81, 82FF, 65, 95, 97, 89 | 2022-07-06 | 2022-07-13 | 6d | 0d |  |
| 99 | 1.7 | **Comissionamento/Startup** |  | 6d | 2022-07-14 | 2022-07-21 |  | 2022-07-14 | 2022-07-21 | 6d | 0d |  |
| 100 | 1.7.1 | **Preparação do Novo sistema** |  | 1d | 2022-07-14 | 2022-07-14 |  | 2022-07-14 | 2022-07-14 | 1d | 0d |  |
| 101 | 1.7.1.1 | Instalar servidores |  | 4h | 2022-07-14 | 2022-07-14 | 98, 79 | 2022-07-14 | 2022-07-14 | 4h | 0d |  |
| 102 | 1.7.1.2 | Colocar computador na rede de automação |  | 4h | 2022-07-14 | 2022-07-14 | 101 | 2022-07-14 | 2022-07-14 | 4h | 0d |  |
| 103 | 1.7.2 | **Teste de Campo** |  | 5d | 2022-07-15 | 2022-07-21 |  | 2022-07-15 | 2022-07-21 | 5d | 0d |  |
| 104 | 1.7.2.1 | Testar comunicação IO/CLP |  | 4h | 2022-07-15 | 2022-07-15 | 102, 98, 76 | 2022-07-15 | 2022-07-15 | 4h | 0d |  |
| 105 | 1.7.2.2 | Testar Comunicação CLP/Supervisório |  | 4h | 2022-07-15 | 2022-07-15 | 104 | 2022-07-15 | 2022-07-15 | 4h | 0d |  |
| 106 | 1.7.2.3 | Testar pontos |  | 3d | 2022-07-18 | 2022-07-20 | 105 | 2022-07-18 | 2022-07-20 | 3d | 0d |  |
| 107 | 1.7.2.4 | Testar lógicas a vazio |  | 1d | 2022-07-21 | 2022-07-21 | 106 | 2022-07-21 | 2022-07-21 | 1d | 0d |  |

| ID | WBS | Task | Type | Duration | Start | Finish | Predecessors | Baseline start | Baseline finish | Baseline duration | Total slack |
| --- | --- | --- | --- | --- | --- | --- | --- | --- | --- | --- | --- |
| 108 | 1.7.3 | **Funcionamento** |  | 0d | 2022-07-21 | 2022-07-21 |  | 2022-07-21 | 2022-07-21 | 0d | 0d |
| 109 | 1.7.3.1 | Colocar sistema em fucionamento | milestone | 0d | 2022-07-21 | 2022-07-21 | 107 | 2022-07-21 | 2022-07-21 | 0d | 0d |
| 110 | 1.8 | **Operação Assistida** |  | 0d | 2022-07-21 | 2022-07-21 |  | 2022-07-21 | 2022-07-21 | 0d | 0d |
| 111 | 1.8.1 | Acompanhar funcionamento do sistema | milestone | 0d | 2022-07-21 | 2022-07-21 | 109 | 2022-07-21 | 2022-07-21 | 0d | 0d |
